gantt
    title 宠物动作识别与端云集成 · 交付冲刺计划（2026.11.11 周三 - 11.23 周一）
    dateFormat YYYY-MM-DD
    axisFormat %m/%d
    todayMarker off

    section 关键节点
    硬件整机到手：能拍摄、能转身       :milestone, m1, 2026-11-13, 2026-11-13
    内部封板：功能与指标全部就绪       :milestone, m2, 2026-11-18, 2026-11-18
    全链路演练通过                     :milestone, m3, 2026-11-20, 2026-11-20
    项目联合验收                       :milestone, m4, 2026-11-23, 2026-11-23

    section 硬件组（设备交付与支持）
    样机序列号与不变性验证             :crit, h6, 2026-11-11, 2026-11-12
    板厂SDK与系统信息                  :crit, h7, 2026-11-11, 2026-11-13
    控制指令与推流参数                 :h1, 2026-11-11, 2026-11-13
    模组装配与电机调试                 :h2, 2026-11-11, 2026-11-13
    摄像头图像调优                     :crit, h5, 2026-11-11, 2026-11-13
    整机通电：推流与转身               :crit, h3, 2026-11-13, 2026-11-15
    现场支持与固件修复                 :h4, 2026-11-15, 2026-11-18

    section 算法训练（郑鑫裕）
    动作检测滑窗与区间分割             :crit, t3, 2026-11-12, 2026-11-15
    后处理调优：逐类阈值与段规则       :crit, t7, 2026-11-15, 2026-11-17
    逐类召回监控（滚动刷新）           :t2, 2026-11-11, 2026-11-16
    高漏检补样与加权重训               :t1, 2026-11-11, 2026-11-14
    第二轮重训：补样与类权重           :t10, 2026-11-14, 2026-11-16
    YOLO 蒸馏与宠物检测                :t6, 2026-11-12, 2026-11-18
    测试集双指标核验                   :crit, t4, 2026-11-17, 2026-11-18
    导出与交付推理模型                 :t5, 2026-11-18, 2026-11-19
    真机联调：推流+推理+上报           :t9, 2026-11-19, 2026-11-22
    板端量化与精度对照（加分项）       :t8, 2026-11-19, 2026-11-22

    section 端云集成（吴赟阳）
    占比与累计时长统计                 :w1, 2026-11-11, 2026-11-13
    行为看板与视频回放                 :w2, 2026-11-11, 2026-11-14
    亮点抓取与剪辑                     :w3, 2026-11-12, 2026-11-14
    远程环境联通                       :w4, 2026-11-11, 2026-11-12
    通信协议格式定稿                   :w5, 2026-11-12, 2026-11-13
    画面指标上报远程                   :w6, 2026-11-13, 2026-11-15
    直播流推送远程                     :w7, 2026-11-14, 2026-11-16
    本地功能与远程对接                 :crit, w8, 2026-11-15, 2026-11-17
    目标定位与跟拍闭环                 :crit, w9, 2026-11-14, 2026-11-17

    section 演练与验收（全体）
    长时运行与断网重连                 :j1, 2026-11-19, 2026-11-21
    演示脚本与用例走查                 :j2, 2026-11-20, 2026-11-22
    彩排与正式验收                     :crit, j3, 2026-11-22, 2026-11-23

    section 检查节点（郑鑫裕）
    周三·任务对齐                     :s1, 2026-11-11, 2026-11-13
    周五·硬件冒烟验收                 :crit, s2, 2026-11-13, 2026-11-15
    周日·核心链路核验                 :s3, 2026-11-15, 2026-11-17
    周二·集成预审                     :s4, 2026-11-17, 2026-11-18
    周三·封板评审                     :crit, s5, 2026-11-18, 2026-11-19
    周五·全链路复盘                   :s6, 2026-11-20, 2026-11-21
